# National Health Campaign

Schedule from MS Project, 2023-03-06 to 2023-05-02, costs in €, A marks actual dates.
Research Programme
ABC Research Ltd.

## Calendars

- Standard: Mon-Fri 08:00-12:00, 13:00-17:00; Sat-Sun off.

## Resources

| Resource | Group | Rate |
| --- | --- | --- |
| Joanne Kelly | Management | 19.23 |
| Riona Carr | Executive | 6.25 |
| Mary Breen | Management | 19.23 |
| Tom Joyce | Office Staff | 6.88 |
| Conf Room | Facilities |  |
| Junior Staff | Office Staff | 3.75 |
| Printing | External |  |

## Schedule

| ID | WBS | Task | Type | Duration | Start | Finish | Predecessors | Complete | Remaining | Baseline start | Baseline finish | Baseline duration | Total slack | Free slack | Constraint | Resources | Work | Actual work | Cost | Baseline cost | Actual cost |
| --- | --- | --- | --- | --- | --- | --- | --- | --- | --- | --- | --- | --- | --- | --- | --- | --- | --- | --- | --- | --- | --- |
| 1 | 1 | **Survey Setup** |  | 9d | 2023-03-06 A | 2023-03-16 |  | 42% | 5.25d | 2023-03-06 | 2023-03-15 | 8d | 0d |  |  |  | 96h | 40h | 537.69 | 487.69 | 457.69 |
| 2 | 1.1 | **Planning** |  | 9d | 2023-03-06 A | 2023-03-16 |  | 42% | 5.25d | 2023-03-06 | 2023-03-15 | 8d | 0d |  |  |  | 96h | 40h | 537.69 | 487.69 | 457.69 |
| 3 | 1.1.1 | Design questionnaire |  | 2d | 2023-03-06 A | 2023-03-07 A |  | 100% |  | 2023-03-06 | 2023-03-07 | 2d |  |  |  | Joanne Kelly | 16h | 16h | 307.69 | 307.69 | 307.69 |
| 4 | 1.1.2 | Type questionnaire |  | 1d | 2023-03-09 | 2023-03-09 | 3 |  |  | 2023-03-08 | 2023-03-08 | 1d | 0d |  | finish no earlier than 2023-03-09 | Junior Staff | 8h |  | 30 | 30 |  |
| 5 | 1.1.3 | Print questionnaire |  | 1w | 2023-03-10 | 2023-03-16 | 4 |  |  | 2023-03-09 | 2023-03-15 | 1w | 0d |  |  | Printing | 40h |  |  |  |  |
| 6 | 1.1.4 | Invite interviewers to briefing meeting |  | 4d | 2023-03-10 A | 2023-03-15 | 5SS | 75% | 1d | 2023-03-09 | 2023-03-13 | 3d | 1d | 0d |  | Riona Carr | 32h | 24h | 200 | 150 | 150 |
| 7 | 1.1.5 | Survey planning complete | milestone | 0d | 2023-03-15 | 2023-03-15 | 3, 6 |  |  | 2023-03-13 | 2023-03-13 | 0d | 1d |  |  |  |  |  |  |  |  |
| 8 | 2 | **Briefing Setup** |  | 9.5d | 2023-03-17 | 2023-03-30 | 1 |  |  | 2023-03-16 | 2023-03-29 | 9.5d | 0d |  |  |  | 84h |  | 472.5 | 472.5 |  |
| 9 | 2.1 | Book conference room for briefing meeting |  | 4h | 2023-03-17 | 2023-03-17 | 5 |  |  | 2023-03-16 | 2023-03-16 | 4h | 0d |  |  | Tom Joyce | 4h |  | 27.5 | 27.5 |  |
| 10 | 2.2 | Contact interviewing locations |  | 2d | 2023-03-17 | 2023-03-20 | 9SS |  |  | 2023-03-16 | 2023-03-17 | 2d | 0d |  |  | Tom Joyce | 16h |  | 110 | 110 |  |
| 11 | 2.3 | Prepare rosters |  | 4d | 2023-03-21 | 2023-03-24 | 10 |  |  | 2023-03-20 | 2023-03-23 | 4d | 0d |  |  | Tom Joyce | 32h |  | 220 | 220 |  |
| 12 | 2.4 | Prepare packs for each interviewer |  | 3d | 2023-03-27 | 2023-03-29 | 11 |  |  | 2023-03-24 | 2023-03-28 | 3d | 0d |  |  | Junior Staff | 24h |  | 90 | 90 |  |
| 13 | 2.5 | Briefing Meeting with Interviewers |  | 4h | 2023-03-30 | 2023-03-30 | 12 |  |  | 2023-03-29 | 2023-03-29 | 4h | 0d |  |  | Conf Room; Riona Carr | 8h |  | 25 | 25 |  |
| 14 | 2.6 | Interviewers briefing complete | milestone | 0d | 2023-03-30 | 2023-03-30 | 13 |  |  | 2023-03-29 | 2023-03-29 | 0d | 0d |  |  | Riona Carr |  |  |  |  |  |
| 15 | 3 | **Data Processing** |  | 15.5d | 2023-03-30 | 2023-04-20 | 8 |  |  | 2023-03-29 | 2023-04-19 | 15.5d | 0d |  |  |  | 132h |  | 792.69 | 792.69 |  |
| 16 | 3.1 | Prepare Book-in forms |  | 2d | 2023-03-30 | 2023-04-03 |  |  |  | 2023-03-29 | 2023-03-31 | 2d | 3.5d | 0d |  |  |  |  |  |  |  |
| 17 | 3.2 | Check questionnaires |  | 2d | 2023-04-03 | 2023-04-05 | 16 |  |  | 2023-03-31 | 2023-04-04 | 2d | 3.5d |  |  | Junior Staff | 16h |  | 60 | 60 |  |
| 18 | 3.3 | Code questionnaires |  | 1.5w | 2023-03-30 | 2023-04-10 | 17FF |  |  | 2023-03-29 | 2023-04-07 | 1.5w | 0d |  |  | Junior Staff | 60h |  | 225 | 225 |  |
| 19 | 3.4 | Input data in computer |  | 3d | 2023-04-14 | 2023-04-18 | 18FS+3d |  |  | 2023-04-13 | 2023-04-17 | 3d | 0d |  |  | Junior Staff | 24h |  | 90 | 90 |  |
| 20 | 3.5 | Analyse the data |  | 2d | 2023-04-19 | 2023-04-20 | 19 |  |  | 2023-04-18 | 2023-04-19 | 2d | 0d |  |  | Joanne Kelly; Tom Joyce | 32h |  | 417.69 | 417.69 |  |
| 21 | 3.6 | Data processing complete | milestone | 0d | 2023-04-20 | 2023-04-20 | 20 |  |  | 2023-04-19 | 2023-04-19 | 0d | 0d |  |  |  |  |  |  |  |  |
| 22 | 4 | **Interpretation** |  | 8d | 2023-04-21 | 2023-05-02 | 15 |  |  | 2023-04-20 | 2023-05-01 | 8d | 0d |  |  |  | 128h |  | 2,461.54 | 2,461.54 |  |
| 23 | 4.1 | Prepare presentation |  | 3d | 2023-04-21 | 2023-04-25 |  |  |  | 2023-04-20 | 2023-04-24 | 3d | 0d |  |  | Mary Breen; Joanne Kelly | 48h |  | 923.08 | 923.08 |  |
| 24 | 4.2 | Prepare research report |  | 1w | 2023-04-26 | 2023-05-02 | 23 |  |  | 2023-04-25 | 2023-05-01 | 1w | 0d |  |  | Mary Breen; Joanne Kelly | 80h |  | 1,538.46 | 1,538.46 |  |
| 25 | 4.3 | Project complete | milestone | 0d | 2023-05-02 | 2023-05-02 | 24 |  |  | 2023-05-01 | 2023-05-01 | 0d | 0d |  |  |  |  |  |  |  |  |
